# Smart Home System

Schedule from MS Project, 2024-01-10 to 2025-04-24, status date 2024-01-10, costs in €, A marks actual dates.

## Calendars

- Smart House system: Mon-Fri 08:00-12:00, 13:00-17:00; Sat-Sun off. Exceptions (off unless hours are given): 2024-03-31 (pasqua), 2024-04-01 (pasquetta), 2024-12-23 to 2025-01-06 (Feste Natale 2024), 2025-04-20 (Pasqua), 2025-04-21 (Pasquetta).

## Resources

| Resource | Unit | Rate | Notes |
| --- | --- | --- | --- |
| Project Manager |  | 40 |  |
| Business Analyst |  | 32 |  |
| Technical Expert |  | 35 |  |
| Legal Advisor |  | 28 |  |
| Finance Analyst |  | 20 |  |
| Designers |  | 18 |  |
| Energy Management Expert |  | 23 |  |
| Security Experts |  | 28 |  |
| Technical Specialists |  | 50 |  |
| Trainers |  | 18 |  |
| Testers |  | 22 |  |
| Procurement Specialist |  | 28 |  |
| Deployment Specialist |  | 19 |  |
| Machine Learning Expert |  | 21 |  |
| Nest Aware Plus(Cloud Server) | y. | 120 |  |
| Animus Heart |  |  |  |
| Nest Hub(2nd generation) |  |  | 1*Nest Hub(2nd generation) = 100 euro / worry-free entertainment, use with touch,voice, helps you with all house hold.... |
| Nest Learning Thermostat |  |  | 1*Nest Learning Thermostat = 250 euro / it performs itself after integrating and help us to save lot of energy/reduce the energy bill |
| Nest Wifi |  |  | 1 * Nest wifi = 220 euros / (Heart of Home) |
| Nest Cam |  |  | 1*Nest cam = 200 euro / for each house i need atleast 5 cameras / 5*200 = 1000 |
| Nest Door bell |  |  | 1*Nest Door bell = 200euro |
| Nest smoke protector & connector |  |  | 1* Nest smoke protector & connector - 130 euro |
| Nest Audio(google assistant) |  |  | 1 * Nest Audio = 100 / we need atleast 6 / 6*100=600 |
| smart light and blub |  |  | 70 euro for each / 36*70 |
| IT Specialist |  | 24 |  |
| QA |  | 18 |  |

## Schedule

| ID | WBS | Task | Type | Duration | Start | Finish | Predecessors | Complete | Remaining | Baseline start | Baseline finish | Baseline duration | Total slack | Free slack | Resources | Work | Actual work | Cost | Baseline cost | Actual cost |
| --- | --- | --- | --- | --- | --- | --- | --- | --- | --- | --- | --- | --- | --- | --- | --- | --- | --- | --- | --- | --- |
| 1 | 1 | Smart Home System Project kickoff | milestone | 0d | 2024-01-10 | 2024-01-10 |  |  |  | 2024-01-10 | 2024-01-10 | 0d | 0d |  |  |  |  |  |  |  |
| 2 | 2 | **Project Initiation and Planning** |  | 60d | 2024-01-10 A | 2024-04-03 | 1 | 82% | 10.57d | 2024-01-10 | 2024-04-03 | 60d | 0d |  |  | 516h | 449.6h | 19,184 | 19,184 | 17,036 |
| 3 | 2.1 | Define Project Objectives and Scope (lighting, HVAC, security) |  | 6d | 2024-01-10 A | 2024-01-17 A |  | 100% |  | 2024-01-10 | 2024-01-17 | 6d |  |  |  |  |  |  |  |  |
| 4 | 2.2 | **Feasibility and Planning** |  | 22d | 2024-01-18 A | 2024-02-16 | 3 | 71% | 6.44d | 2024-01-18 | 2024-02-16 | 22d | 0d |  |  | 144h | 122h | 4,296 | 4,296 | 3,856 |
| 5 | 2.2.1 | Conduct Feasibility Study |  | 7d | 2024-01-18 A | 2024-01-26 A |  | 100% |  | 2024-01-18 | 2024-01-26 | 7d |  |  | Business Analyst; Technical Expert | 104h | 104h | 3,496 | 3,496 | 3,496 |
| 6 | 2.2.2 | Develop Project Charter |  | 4d | 2024-01-29 A | 2024-02-01 | 5 | 90% | 0.4d | 2024-01-29 | 2024-02-01 | 4d | 1.75d | 0d |  |  |  |  |  |  |
| 7 | 2.2.3 | Assemble Project Team |  | 5d | 2024-02-02 A | 2024-02-08 | 6 | 35% | 3.25d | 2024-02-02 | 2024-02-08 | 5d | 6d |  |  |  |  |  |  |  |
| 8 | 2.2.4 | Risk Management |  | 6d | 2024-02-02 A | 2024-02-09 | 6 | 75% | 1.5d | 2024-02-02 | 2024-02-09 | 6d | 2.25d | 0d |  |  |  |  |  |  |
| 9 | 2.2.5 | Budget and Resource Allocations |  | 5d | 2024-02-12 A | 2024-02-16 | 8 | 45% | 2.75d | 2024-02-12 | 2024-02-16 | 5d | 0d |  | Finance Analyst | 40h | 18h | 800 | 800 | 360 |
| 10 | 2.3 | **Technology and Design** |  | 32d | 2024-02-19 A | 2024-04-03 | 4 | 89% | 3.55d | 2024-02-19 | 2024-04-03 | 32d | 0d |  |  | 372h | 327.6h | 14,888 | 14,888 | 13,180 |
| 11 | 2.3.1 | Collaborate with Technical specialist/Architect |  | 11d | 2024-02-19 A | 2024-03-04 |  | 85% | 1.65d | 2024-02-19 | 2024-03-04 | 11d | 6.3d | 0d | Designers; Technical Specialists | 176h | 149.6h | 5,984 | 5,984 | 5,086.4 |
| 12 | 2.3.2 | Develop Technical Specifications and Designs |  | 7d | 2024-03-05 A | 2024-03-13 | 11 | 90% | 0.7d | 2024-03-05 | 2024-03-13 | 7d | 4.8d | 0d | Designers [50%]; Technical Specialists | 84h | 75.6h | 3,304 | 3,304 | 2,973.6 |
| 13 | 2.3.3 | Design Technical Network Architecture |  | 6d | 2024-03-14 A | 2024-03-21 | 12 | 80% | 1.2d | 2024-03-14 | 2024-03-21 | 6d | 8d |  | Technical Specialists | 48h | 38.4h | 2,400 | 2,400 | 1,920 |
| 14 | 2.3.4 | Specify Technical Communication Protocols |  | 8d | 2024-03-22 A | 2024-04-03 A | 13 | 100% |  | 2024-03-22 | 2024-04-03 | 8d |  |  | Technical Specialists | 64h | 64h | 3,200 | 3,200 | 3,200 |
| 15 | 3 | Project Initiation and Planning Concluded | milestone | 0d | 2024-04-03 | 2024-04-03 | 2 |  |  | 2024-04-03 | 2024-04-03 | 0d | 0d |  |  |  |  |  |  |  |
| 16 | 4 | **Procurement and Installation** |  | 67d | 2024-04-04 A | 2024-07-05 |  | 84% | 10.41d | 2024-04-04 | 2024-07-05 | 67d | 2.8d | 0d |  | 782.4h | 670.96h | 21,843.2 | 21,843.2 | 18,417.28 |
| 17 | 4.1 | **Design and Specify Technical Systems** |  | 39d | 2024-04-04 A | 2024-05-28 | 15 | 85% | 5.85d | 2024-04-04 | 2024-05-28 | 39d | 30.8d |  |  | 536h | 468.4h | 13,632 | 13,632 | 11,761.6 |
| 18 | 4.1.1 | Design Technical Energy Management System |  | 12d | 2024-04-04 A | 2024-04-19 A |  | 100% |  | 2024-04-04 | 2024-04-19 | 12d |  |  | Designers; Energy Management Expert | 192h | 192h | 3,936 | 3,936 | 3,936 |
| 19 | 4.1.2 | Specify Technical Security Measures and Develop Contingency Plan |  | 9d | 2024-04-22 A | 2024-05-02 | 18 | 75% | 2.25d | 2024-04-22 | 2024-05-02 | 9d | 6.8d | 0d | Security Experts | 72h | 54h | 2,016 | 2,016 | 1,512 |
| 20 | 4.1.3 | Collaborate with Technical Manufacturers |  | 8d | 2024-05-03 A | 2024-05-14 | 19 | 85% | 1.2d | 2024-05-03 | 2024-05-14 | 8d | 8d | 0d | Procurement Specialist; Technical Specialists [50%] | 96h | 81.6h | 3,392 | 3,392 | 2,883.2 |
| 21 | 4.1.4 | Conduct Technical Cost-Benefit Analysis |  | 10d | 2024-05-15 A | 2024-05-28 | 20 | 80% | 2d | 2024-05-15 | 2024-05-28 | 10d | 0d |  | Finance Analyst | 80h | 64h | 1,600 | 1,600 | 1,280 |
| 22 | 4.1.5 | Issue Technical RFPs, Evaluate Proposals, and Negotiate Contracts |  | 8d | 2024-04-04 A | 2024-04-15 |  | 80% | 1.6d | 2024-04-04 | 2024-04-15 | 8d | 61.8d |  | Procurement Specialist [50%]; Legal Advisor | 96h | 76.8h | 2,688 | 2,688 | 2,150.4 |
| 23 | 4.2 | **Technical Procurement Planning and Execution** |  | 14d | 2024-05-29 A | 2024-06-17 | 21 | 86% | 2d | 2024-05-29 | 2024-06-17 | 14d | 0d |  |  | 144h | 120h | 3,936 | 3,936 | 3,288 |
| 24 | 4.2.1 | Develop Technical Procurement Schedule and Set Up Tracking System |  | 10d | 2024-05-29 A | 2024-06-11 |  | 90% | 1d | 2024-05-29 | 2024-06-11 | 10d | 3d | 0d | Procurement Specialist | 80h | 72h | 2,240 | 2,240 | 2,016 |
| 25 | 4.2.2 | Conduct Technical Training Sessions |  | 4d | 2024-06-12 A | 2024-06-17 | 24 | 75% | 1d | 2024-06-12 | 2024-06-17 | 4d | 0d |  | Trainers; Technical Expert | 64h | 48h | 1,696 | 1,696 | 1,272 |

| ID | WBS | Task | Type | Duration | Start | Finish | Predecessors | Complete | Remaining | Baseline start | Baseline finish | Baseline duration | Total slack | Free slack | Constraint | Resources | Work | Actual work | Cost | Baseline cost | Actual cost |
| --- | --- | --- | --- | --- | --- | --- | --- | --- | --- | --- | --- | --- | --- | --- | --- | --- | --- | --- | --- | --- | --- |
| 26 | 4.3 | **Installation and Configuration** |  | 14d | 2024-06-18 A | 2024-07-05 | 23 | 81% | 2.6d | 2024-06-18 | 2024-07-05 | 14d | 2.8d |  |  |  | 102.4h | 82.56h | 4,275.2 | 4,275.2 | 3,367.68 |
| 27 | 4.3.1 | Install Technical Control Hub, Smart Lighting, HVAC Systems |  | 8d | 2024-06-18 A | 2024-06-27 |  | 75% | 2d | 2024-06-18 | 2024-06-27 | 8d | 5.4d | 0d | start no later than 2024-06-18 | Technical Specialists | 64h | 48h | 3,200 | 3,200 | 2,400 |
| 28 | 4.3.2 | Configure Technical Security Systems |  | 6d | 2024-06-28 A | 2024-07-05 | 27 | 90% | 0.6d | 2024-06-28 | 2024-07-05 | 6d | 2.8d |  |  | Security Experts [80%] | 38.4h | 34.56h | 1,075.2 | 1,075.2 | 967.68 |
| 29 | 5 | Procurement and Installation Concluded | milestone | 0d | 2024-07-05 | 2024-07-05 | 16 |  |  | 2024-07-05 | 2024-07-05 | 0d | 2.8d | 0d |  |  |  |  |  |  |  |
| 30 | 6 | **Testing and Quality Assurance** |  | 54d | 2024-07-05 A | 2024-09-19 |  | 75% | 13.32d | 2024-07-05 | 2024-09-19 | 54d | 0d |  |  |  | 755.6h | 564.32h | 18,983.2 | 18,983.2 | 14,143.84 |
| 31 | 6.1 | **Technical Testing and Acceptance** |  | 21d | 2024-07-05 A | 2024-08-05 |  | 68% | 6.62d | 2024-07-05 | 2024-08-05 | 21d | 33d |  |  |  | 270h | 181h | 6,420 | 6,420 | 4,174 |
| 32 | 6.1.1 | Technical Testing and Acceptance Start | milestone | 0d | 2024-07-05 | 2024-07-05 | 29 |  |  | 2024-07-05 | 2024-07-05 | 0d | 2.8d | 0d |  |  |  |  |  |  |  |
| 33 | 6.1.2 | Perform Interoperability and User Acceptance Tests |  | 9d | 2024-07-08 A | 2024-07-18 | 32 | 95% | 0.45d | 2024-07-08 | 2024-07-18 | 9d | 8.1d | 0d |  | Testers | 72h | 68.4h | 1,584 | 1,584 | 1,504.8 |
| 34 | 6.1.3 | Test Emergency Response Scenarios |  | 9d | 2024-07-12 A | 2024-07-24 | 33FS-5d | 90% | 0.9d | 2024-07-12 | 2024-07-24 | 9d | 4d | 0d |  | Testers [75%] | 54h | 48.6h | 1,188 | 1,188 | 1,069.2 |
| 35 | 6.1.4 | Conduct Load Testing |  | 8d | 2024-07-25 A | 2024-08-05 | 34 | 50% | 4d | 2024-07-25 | 2024-08-05 | 8d | 33d | 0d |  | Testers | 64h | 32h | 1,408 | 1,408 | 704 |
| 36 | 6.1.5 | Perform Security Penetration Testing |  | 10d | 2024-07-23 A | 2024-08-05 | 35FF | 40% | 6d | 2024-07-23 | 2024-08-05 | 10d | 33d |  |  | Security Experts | 80h | 32h | 2,240 | 2,240 | 896 |
| 37 | 6.1.6 | Technical Testing and Acceptance Finished | milestone | 0d | 2024-07-05 | 2024-07-05 | 32 |  |  | 2024-07-05 | 2024-07-05 | 0d | 2.8d | 0d |  |  |  |  |  |  |  |
| 38 | 6.2 | Implement Technical Firmware and Software Updates and bug fixes |  | 8d | 2024-07-08 A | 2024-07-17 | 37 | 35% | 5.2d | 2024-07-08 | 2024-07-17 | 8d | 0d |  |  | IT Specialist | 64h | 22.4h | 1,536 | 1,536 | 537.6 |
| 39 | 6.3 | **Quality Assurance and Sustainability** |  | 30d | 2024-07-18 A | 2024-08-28 | 38 | 84% | 4.78d | 2024-07-18 | 2024-08-28 | 30d | 0d |  |  |  | 282.4h | 241.56h | 6,124.8 | 6,124.8 | 5,235.12 |
| 40 | 6.3.1 | Conduct Quality Assurance Review |  | 8d | 2024-07-18 A | 2024-07-29 |  | 90% | 0.8d | 2024-07-18 | 2024-07-29 | 8d | 6.8d | 0d |  | QA | 64h | 57.6h | 1,152 | 1,152 | 1,036.8 |
| 41 | 6.3.2 | Test Energy Consumption Optimization |  | 8d | 2024-07-30 A | 2024-08-08 | 40 | 85% | 1.2d | 2024-07-30 | 2024-08-08 | 8d | 4.5d | 0d |  | Energy Management Expert | 64h | 54.4h | 1,472 | 1,472 | 1,251.2 |
| 42 | 6.3.3 | Implement Renewable Energy Systems |  | 5d | 2024-08-09 A | 2024-08-15 | 41 | 90% | 0.5d | 2024-08-09 | 2024-08-15 | 5d | 5.85d | 0d |  | Energy Management Expert | 40h | 36h | 920 | 920 | 828 |
| 43 | 6.3.4 | Implement Waste Management System |  | 8d | 2024-08-06 A | 2024-08-15 | 42FF | 95% | 0.4d | 2024-08-06 | 2024-08-15 | 8d | 5.85d | 0d |  | Energy Management Expert | 64h | 60.8h | 1,472 | 1,472 | 1,398.4 |
| 44 | 6.3.5 | Perform Accessibility Testing |  | 9d | 2024-08-16 A | 2024-08-28 | 43 | 65% | 3.15d | 2024-08-16 | 2024-08-28 | 9d | 0d |  |  | Testers [70%] | 50.4h | 32.76h | 1,108.8 | 1,108.8 | 720.72 |
| 45 | 6.4 | **System Integration and Enhancements** |  | 16d | 2024-08-29 A | 2024-09-19 | 44 | 87% | 2.13d | 2024-08-29 | 2024-09-19 | 16d | 0d |  |  |  | 139.2h | 119.36h | 4,902.4 | 4,902.4 | 4,197.12 |
| 46 | 6.4.1 | Set Up Voice-Controlled Assistants |  | 5d | 2024-08-29 A | 2024-09-04 A |  | 100% |  | 2024-08-29 | 2024-09-04 | 5d |  |  | start no later than 2024-08-28 | IT Specialist [60%] | 24h | 24h | 576 | 576 | 576 |
| 47 | 6.4.2 | Install Energy-Efficient Windows |  | 8d | 2024-08-29 A | 2024-09-09 |  | 85% | 1.2d | 2024-08-29 | 2024-09-09 | 8d | 6.4d | 0d |  | Technical Specialists | 64h | 54.4h | 3,200 | 3,200 | 2,720 |
| 48 | 6.4.3 | Conduct System Integration Tests |  | 8d | 2024-09-10 A | 2024-09-19 | 46, 47 | 80% | 1.6d | 2024-09-10 | 2024-09-19 | 8d | 0d |  |  | Testers [80%] | 51.2h | 40.96h | 1,126.4 | 1,126.4 | 901.12 |
| 49 | 7 | Testing and Quality Assurance Concluded | milestone | 0d | 2024-09-19 | 2024-09-19 | 30 |  |  | 2024-09-19 | 2024-09-19 | 0d | 0d |  |  |  |  |  |  |  |  |

| ID | WBS | Task | Type | Duration | Start | Finish | Predecessors | Complete | Remaining | Baseline start | Baseline finish | Baseline duration | Total slack | Free slack | Resources | Work | Actual work | Cost | Baseline cost | Actual cost |
| --- | --- | --- | --- | --- | --- | --- | --- | --- | --- | --- | --- | --- | --- | --- | --- | --- | --- | --- | --- | --- |
| 50 | 8 | **Implementation and Deployment** |  | 38d | 2024-09-20 A | 2024-11-12 |  | 76% | 9d | 2024-09-20 | 2024-11-12 | 38d | 0d |  |  | 382h | 282.4h | 8,560 | 8,560 | 6,324.6 |
| 51 | 8.1 | **Initial Preparations** |  | 10d | 2024-09-20 A | 2024-10-03 | 49 | 88% | 1.25d | 2024-09-20 | 2024-10-03 | 10d | 4.8d |  |  | 100h | 89h | 2,540 | 2,540 | 2,245 |
| 52 | 8.1.1 | Conduct Technical Walkthrough Inspection and Training for Homeowners |  | 5d | 2024-09-20 A | 2024-09-26 |  | 95% | 0.25d | 2024-09-20 | 2024-09-26 | 5d | 4d | 0d | Trainers; Technical Expert [50%] | 60h | 57h | 1,420 | 1,420 | 1,349 |
| 53 | 8.1.2 | Implement Security Vulnerability Assessments |  | 5d | 2024-09-27 A | 2024-10-03 | 52 | 80% | 1d | 2024-09-27 | 2024-10-03 | 5d | 4.8d | 0d | Security Experts | 40h | 32h | 1,120 | 1,120 | 896 |
| 54 | 8.2 | **Deployment and Homeowner Interaction & system verification** |  | 19d | 2024-10-04 A | 2024-10-30 |  | 66% | 6.45d | 2024-10-04 | 2024-10-30 | 19d | 0d |  |  | 200h | 124.4h | 4,144 | 4,144 | 2,517.6 |
| 55 | 8.2.1 | Deploy Smart Home System |  | 8d | 2024-10-04 A | 2024-10-15 | 53 | 60% | 3.2d | 2024-10-04 | 2024-10-15 | 8d | 3d | 0d | Deployment Specialist | 64h | 38.4h | 1,216 | 1,216 | 729.6 |
| 56 | 8.2.2 | Conduct System Testing, Integration Verification, and Optimization |  | 6d | 2024-10-16 A | 2024-10-23 | 55 | 50% | 3d | 2024-10-16 | 2024-10-23 | 6d | 4.75d | 0d | Testers; IT Specialist | 96h | 48h | 2,208 | 2,208 | 1,104 |
| 57 | 8.2.3 | Implement Homeowner Feedback Mechanism |  | 5d | 2024-10-24 A | 2024-10-30 | 56 | 95% | 0.25d | 2024-10-24 | 2024-10-30 | 5d | 0d |  | QA | 40h | 38h | 720 | 720 | 684 |
| 58 | 8.3 | **Post-Implementation and Monitoring** |  | 9d | 2024-10-31 A | 2024-11-12 | 57 | 86% | 1.3d | 2024-10-31 | 2024-11-12 | 9d | 0d |  |  | 82h | 69h | 1,876 | 1,876 | 1,562 |
| 59 | 8.3.1 | Conduct Post-Implementation Review and Monitor System Performance |  | 5d | 2024-10-31 A | 2024-11-06 |  | 90% | 0.5d | 2024-10-31 | 2024-11-06 | 5d | 3.2d | 0d | QA [85%] | 34h | 30.6h | 612 | 612 | 550.8 |
| 60 | 8.3.2 | Evaluate Energy Savings, Conduct Security Audits |  | 4d | 2024-11-07 A | 2024-11-12 | 59 | 80% | 0.8d | 2024-11-07 | 2024-11-12 | 4d | 0d |  | Security Experts; Energy Management Expert [50%] | 48h | 38.4h | 1,264 | 1,264 | 1,011.2 |
| 61 | 9 | Implementation and Deployment Concluded | milestone | 0d | 2024-11-12 | 2024-11-12 | 50 |  |  | 2024-11-12 | 2024-11-12 | 0d | 0d |  |  |  |  |  |  |  |
| 62 | 10 | **Operation and Maintenance** |  | 256d | 2024-01-10 A | 2025-01-17 |  | 58% | 107.13d | 2024-01-10 | 2025-01-17 | 256d | 0d |  |  | 419.2h | 238.48h | 9,666.4 | 9,666.4 | 5,455.56 |
| 63 | 10.1 | **Technical User Support and Optimization** |  | 14d | 2024-11-13 A | 2024-12-02 | 61 | 83% | 2.33d | 2024-11-13 | 2024-12-02 | 14d | 0d |  |  | 120h | 100h | 2,568 | 2,568 | 2,191.2 |
| 64 | 10.1.1 | Implement User Support System |  | 5d | 2024-11-13 A | 2024-11-19 A |  | 100% |  | 2024-11-13 | 2024-11-19 | 5d |  |  | IT Specialist | 40h | 40h | 960 | 960 | 960 |
| 65 | 10.1.2 | Optimize Machine Learning Algorithms |  | 7d | 2024-11-19 A | 2024-11-27 | 64FS-1d | 90% | 0.7d | 2024-11-19 | 2024-11-27 | 7d | 1.2d | 0d | Machine Learning Expert | 56h | 50.4h | 1,176 | 1,176 | 1,058.4 |
| 66 | 10.1.3 | Conduct Security Training |  | 3d | 2024-11-28 A | 2024-12-02 | 65 | 40% | 1.8d | 2024-11-28 | 2024-12-02 | 3d | 0d |  | Trainers | 24h | 9.6h | 432 | 432 | 172.8 |
| 67 | 10.2 | **Technical Updates and Enhancements** |  | 16d | 2024-12-03 A | 2025-01-08 | 66 | 51% | 7.87d | 2024-12-03 | 2025-01-08 | 16d | 1.2d |  |  | 196.8h | 97.36h | 4,633.6 | 4,633.6 | 2,296.32 |
| 68 | 10.2.1 | Implement Software Updates and Optimize Voice-Controlled Features |  | 11d | 2024-12-03 A | 2024-12-17 |  | 55% | 4.95d | 2024-12-03 | 2024-12-17 | 11d | 3.6d | 0d | IT Specialist | 88h | 48.4h | 2,112 | 2,112 | 1,161.6 |
| 69 | 10.2.2 | Implement Predictive Maintenance and Conduct Resilience Testing |  | 8d | 2024-12-13 A | 2025-01-08 | 68FS-3d | 45% | 4.4d | 2024-12-13 | 2025-01-08 | 8d | 1.2d | 0d | IT Specialist; Testers [70%] | 108.8h | 48.96h | 2,521.6 | 2,521.6 | 1,134.72 |
| 70 | 10.3 | **Testing,Audits and feedback** |  | 256d | 2024-01-10 A | 2025-01-17 |  | 38% | 157.87d | 2024-01-10 | 2025-01-17 | 256d | 0d |  |  | 102.4h | 41.12h | 2,464.8 | 2,464.8 | 968.04 |
| 71 | 10.3.1 | Test Integration with External Systems and Conduct Usability Testing |  | 4d | 2025-01-09 A | 2025-01-14 | 69 | 30% | 2.8d | 2025-01-09 | 2025-01-14 | 4d | 1.05d | 0d | Testers [45%] | 14.4h | 4.32h | 316.8 | 316.8 | 95.04 |
| 72 | 10.3.2 | Implement Data Backup Recovery and Perform Network Security Audits |  | 3d | 2025-01-15 A | 2025-01-17 | 71 | 35% | 1.95d | 2025-01-15 | 2025-01-17 | 3d | 0d |  | Security Experts; Nest Aware Plus(Cloud Server) [1 y.]; IT Specialist [50%] | 36h | 12.6h | 1,080 | 1,080 | 378 |
| 73 | 10.3.3 | Test Machine Learning Model and Conduct Performance Monitoring |  | 3d | 2024-11-28 A | 2024-12-02 | 65 | 45% | 1.65d | 2024-11-28 | 2024-12-02 | 3d | 23d |  | Machine Learning Expert [50%]; Testers | 36h | 16.2h | 780 | 780 | 351 |
| 74 | 10.3.4 | Conduct Homeowner Satisfaction Surveys |  | 2d | 2024-01-10 A | 2024-01-11 |  | 50% | 1d | 2024-01-10 | 2024-01-11 | 2d | 254d |  | QA | 16h | 8h | 288 | 288 | 144 |
| 75 | 11 | Operation and Maintenance Concluded | milestone | 0d | 2025-01-17 | 2025-01-17 | 62 |  |  | 2025-01-17 | 2025-01-17 | 0d | 0d |  |  |  |  |  |  |  |

| ID | WBS | Task | Type | Duration | Start | Finish | Predecessors | Complete | Remaining | Baseline start | Baseline finish | Baseline duration | Total slack | Free slack | Resources | Work | Actual work | Cost | Baseline cost | Actual cost |
| --- | --- | --- | --- | --- | --- | --- | --- | --- | --- | --- | --- | --- | --- | --- | --- | --- | --- | --- | --- | --- |
| 76 | 12 | **Monitoring and Enhancements** |  | 38d | 2025-01-20 A | 2025-03-12 |  | 63% | 14.11d | 2025-01-20 | 2025-03-12 | 38d | 6.65d | 0d |  | 450.4h | 266.8h | 13,150.4 | 13,150.4 | 7,752 |
| 77 | 12.1 | **Voice Recognition and Remote Control** |  | 14d | 2025-01-20 A | 2025-02-06 | 75 | 82% | 2.57d | 2025-01-20 | 2025-02-06 | 14d | 3.6d |  |  | 202.4h | 161.6h | 6,566.4 | 6,566.4 | 5,054.4 |
| 78 | 12.1.1 | Test Voice Recognition Accuracy |  | 3d | 2025-01-20 A | 2025-01-22 A |  | 100% |  | 2025-01-20 | 2025-01-22 | 3d |  |  | IT Specialist [50%] | 12h | 12h | 288 | 288 | 288 |
| 79 | 12.1.2 | Implement Predictive Analytics |  | 4d | 2025-01-23 A | 2025-01-28 A | 78 | 100% |  | 2025-01-23 | 2025-01-28 | 4d |  |  | IT Specialist; Machine Learning Expert [70%] | 54.4h | 54.4h | 1,238.4 | 1,238.4 | 1,238.4 |
| 80 | 12.1.3 | Conduct Remote Protocols and Implement Remote System Control |  | 6d | 2025-01-23 A | 2025-01-30 | 79SS | 70% | 1.8d | 2025-01-23 | 2025-01-30 | 6d | 3.5d | 0d | Technical Specialists; Technical Expert | 96h | 67.2h | 4,080 | 4,080 | 2,856 |
| 81 | 12.1.4 | Optimize Interfaces for Mobile Devices |  | 5d | 2025-01-31 A | 2025-02-06 | 80 | 70% | 1.5d | 2025-01-31 | 2025-02-06 | 5d | 3.6d | 0d | IT Specialist | 40h | 28h | 960 | 960 | 672 |
| 82 | 12.2 | **Energy Efficiency, Security, and Optimization** |  | 18d | 2025-02-07 A | 2025-03-04 |  | 55% | 8.1d | 2025-02-07 | 2025-03-04 | 18d | 1.2d |  |  | 104h | 62h | 2,576 | 2,576 | 1,512 |
| 83 | 12.2.1 | Implement Smart Grids for Energy Efficiency |  | 4d | 2025-02-07 A | 2025-02-12 | 81 | 90% | 0.4d | 2025-02-07 | 2025-02-12 | 4d | 2.8d | 0d | Energy Management Expert | 32h | 28.8h | 736 | 736 | 662.4 |
| 84 | 12.2.2 | Optimize Energy-Efficient Features |  | 4d | 2025-02-13 A | 2025-02-18 | 83 | 70% | 1.2d | 2025-02-13 | 2025-02-18 | 4d | 2d | 0d | Energy Management Expert [50%] | 16h | 11.2h | 368 | 368 | 257.6 |
| 85 | 12.2.3 | Enhance Security Measures |  | 4d | 2025-02-19 A | 2025-02-24 | 84 | 50% | 2d | 2025-02-19 | 2025-02-24 | 4d | 1.5d | 0d | Security Experts | 32h | 16h | 896 | 896 | 448 |
| 86 | 12.2.4 | Implement Home Automation Software Updates |  | 6d | 2025-02-25 A | 2025-03-04 | 85 | 25% | 4.5d | 2025-02-25 | 2025-03-04 | 6d | 1.2d | 0d | IT Specialist [50%] | 24h | 6h | 576 | 576 | 144 |
| 87 | 12.3 | **Scalability and Expansion** |  | 6d | 2025-03-05 A | 2025-03-12 |  | 30% | 4.2d | 2025-03-05 | 2025-03-12 | 6d | 6.65d |  |  | 144h | 43.2h | 4,008 | 4,008 | 1,185.6 |
| 88 | 12.3.1 | Evaluate System Expansion Opportunities |  | 3d | 2025-03-05 A | 2025-03-07 | 86 | 40% | 1.8d | 2025-03-05 | 2025-03-07 | 3d | 0.6d | 0d | Security Experts; Business Analyst; Finance Analyst | 72h | 28.8h | 1,920 | 1,920 | 768 |
| 89 | 12.3.2 | Implement Scalability Measures |  | 3d | 2025-03-10 A | 2025-03-12 | 88 | 20% | 2.4d | 2025-03-10 | 2025-03-12 | 3d | 6.65d |  | IT Specialist; Security Experts; Technical Expert | 72h | 14.4h | 2,088 | 2,088 | 417.6 |
| 90 | 13 | Monitoring and Enhancements Concluded | milestone | 0d | 2025-03-12 | 2025-03-12 | 76 |  |  | 2025-03-12 | 2025-03-12 | 0d | 6.65d | 0d |  |  |  |  |  |  |
| 91 | 14 | **Closure** |  | 30d | 2025-03-13 A | 2025-04-24 |  | 83% | 5.2d | 2025-03-13 | 2025-04-24 | 30d | 0d |  |  | 368h | 308.8h | 10,120 | 10,120 | 8,441.2 |
| 92 | 14.1 | Address Technical User Feedback for System Improvements |  | 7d | 2025-03-13 A | 2025-03-21 | 90 | 95% | 0.35d | 2025-03-13 | 2025-03-21 | 7d | 4.5d | 0d | QA; Technical Expert | 112h | 106.4h | 2,968 | 2,968 | 2,819.6 |
| 93 | 14.2 | Optimize Technical Documentation for Future Reference |  | 5d | 2025-03-24 A | 2025-03-28 | 92 | 90% | 0.5d | 2025-03-24 | 2025-03-28 | 5d | 3.4d | 0d | QA | 40h | 36h | 720 | 720 | 648 |
| 94 | 14.3 | Implement Technical Security Patch Management |  | 4d | 2025-03-31 A | 2025-04-03 | 93 | 85% | 0.6d | 2025-03-31 | 2025-04-03 | 4d | 2.4d | 0d | Security Experts; Technical Expert | 64h | 54.4h | 2,016 | 2,016 | 1,713.6 |
| 95 | 14.4 | Conduct Technical Team Training for Ongoing Support |  | 3d | 2025-04-04 A | 2025-04-08 | 94 | 80% | 0.6d | 2025-04-04 | 2025-04-08 | 3d | 3.75d | 0d | Trainers | 24h | 19.2h | 432 | 432 | 345.6 |
| 96 | 14.5 | Monitor Technical System Upgrades and Enhancements |  | 5d | 2025-04-09 A | 2025-04-15 | 95 | 75% | 1.25d | 2025-04-09 | 2025-04-15 | 5d | 2.8d | 0d | Technical Specialists; IT Specialist | 80h | 60h | 2,960 | 2,960 | 2,220 |
| 97 | 14.6 | Conduct Technical System Performance Reviews |  | 4d | 2025-04-16 A | 2025-04-22 | 96 | 70% | 1.2d | 2025-04-16 | 2025-04-22 | 4d | 1.3d | 0d | QA | 32h | 22.4h | 576 | 576 | 403.2 |
| 98 | 14.7 | Review Technical Regulatory Compliance |  | 2d | 2025-04-23 A | 2025-04-24 | 97 | 65% | 0.7d | 2025-04-23 | 2025-04-24 | 2d | 0d |  | Legal Advisor | 16h | 10.4h | 448 | 448 | 291.2 |
| 99 | 15 | Closure Finished | milestone | 0d | 2025-04-24 | 2025-04-24 | 91 |  |  | 2025-04-24 | 2025-04-24 | 0d | 0d |  |  |  |  |  |  |  |
| 100 | 16 | End Of Project | milestone | 0d | 2025-04-24 | 2025-04-24 | 99 |  |  | 2025-04-24 | 2025-04-24 | 0d | 0d |  |  |  |  |  |  |  |

| ID | WBS | Task | Type | Duration | Start | Finish | Predecessors | Baseline start | Baseline finish | Baseline duration | Total slack | Constraint | Resources | Work | Cost | Baseline cost |
| --- | --- | --- | --- | --- | --- | --- | --- | --- | --- | --- | --- | --- | --- | --- | --- | --- |
| 101 | 17 | **PM Activities** |  | 264d | 2024-04-03 | 2025-04-24 | 2 | 2024-04-03 | 2025-04-24 | 264d | 0d |  | Project Manager | 2112h | 84,480 | 84,480 |
| 102 | 17.1 | start of PM | milestone | 0d | 2024-04-03 | 2024-04-03 |  | 2024-04-03 | 2024-04-03 | 0d | 264d |  |  |  |  |  |
| 103 | 17.2 | End of PM | milestone | 0d | 2025-04-24 | 2025-04-24 | 100 | 2025-04-24 | 2025-04-24 | 0d | 0d |  |  |  |  |  |
| 104 | 18 | **Smart Devices Need for House** |  | 264d | 2024-04-03 | 2025-04-24 | 2 | 2024-04-03 | 2025-04-24 | 264d | 0d |  | Nest smoke protector & connector [0.1%]; Nest Wifi [0.1%]; Nest Learning Thermostat [0.1%]; Nest Hub(2nd generation) [0.1%]; Nest Cam [0.1%]; Nest Audio(google assistant) [0.1%]; Nest Door bell [0.1%]; smart light and blub [0.1%] |  | 27,750 | 27,750 |
| 105 | 18.1 | Need of smart device | milestone | 0d | 2024-04-03 | 2024-04-03 |  | 2024-04-03 | 2024-04-03 | 0d | 264d |  |  |  |  |  |
| 106 | 18.2 | End Need of smart device | milestone | 0d | 2025-04-24 | 2025-04-24 | 100 | 2025-04-24 | 2025-04-24 | 0d | 0d |  |  |  |  |  |
| 107 | 19 | **Retrospective Meeting** |  | 312.25d | 2024-01-25 | 2025-04-24 |  | 2024-01-25 | 2025-04-24 | 312.25d | 0.75d |  |  |  |  |  |
| 108 | 19.1 | Retrospective Meeting 1 |  | 2h | 2024-01-25 | 2024-01-25 |  | 2024-01-25 | 2024-01-25 | 2h | 312.75d | start no earlier than 2024-01-25 |  |  |  |  |
| 109 | 19.2 | Retrospective Meeting 2 |  | 2h | 2024-02-22 | 2024-02-22 |  | 2024-02-22 | 2024-02-22 | 2h | 292.75d | start no earlier than 2024-02-22 |  |  |  |  |
| 110 | 19.3 | Retrospective Meeting 3 |  | 2h | 2024-03-28 | 2024-03-28 |  | 2024-03-28 | 2024-03-28 | 2h | 267.75d | start no earlier than 2024-03-28 |  |  |  |  |
| 111 | 19.4 | Retrospective Meeting 4 |  | 2h | 2024-04-25 | 2024-04-25 |  | 2024-04-25 | 2024-04-25 | 2h | 248.75d | start no earlier than 2024-04-25 |  |  |  |  |
| 112 | 19.5 | Retrospective Meeting 5 |  | 2h | 2024-05-23 | 2024-05-23 |  | 2024-05-23 | 2024-05-23 | 2h | 228.75d | start no earlier than 2024-05-23 |  |  |  |  |
| 113 | 19.6 | Retrospective Meeting 6 |  | 2h | 2024-06-27 | 2024-06-27 |  | 2024-06-27 | 2024-06-27 | 2h | 203.75d | start no earlier than 2024-06-27 |  |  |  |  |
| 114 | 19.7 | Retrospective Meeting 7 |  | 2h | 2024-07-25 | 2024-07-25 |  | 2024-07-25 | 2024-07-25 | 2h | 183.75d | start no earlier than 2024-07-25 |  |  |  |  |
| 115 | 19.8 | Retrospective Meeting 8 |  | 2h | 2024-08-22 | 2024-08-22 |  | 2024-08-22 | 2024-08-22 | 2h | 163.75d | start no earlier than 2024-08-22 |  |  |  |  |
| 116 | 19.9 | Retrospective Meeting 9 |  | 2h | 2024-09-26 | 2024-09-26 |  | 2024-09-26 | 2024-09-26 | 2h | 138.75d | start no earlier than 2024-09-26 |  |  |  |  |
| 117 | 19.10 | Retrospective Meeting 10 |  | 2h | 2024-10-24 | 2024-10-24 |  | 2024-10-24 | 2024-10-24 | 2h | 118.75d | start no earlier than 2024-10-24 |  |  |  |  |
| 118 | 19.11 | Retrospective Meeting 11 |  | 2h | 2024-11-28 | 2024-11-28 |  | 2024-11-28 | 2024-11-28 | 2h | 93.75d | start no earlier than 2024-11-28 |  |  |  |  |
| 119 | 19.12 | Retrospective Meeting 12 |  | 2h | 2025-01-07 | 2025-01-07 |  | 2025-01-07 | 2025-01-07 | 2h | 76.75d | start no earlier than 2024-12-26 |  |  |  |  |
| 120 | 19.13 | Retrospective Meeting 13 |  | 2h | 2025-01-23 | 2025-01-23 |  | 2025-01-23 | 2025-01-23 | 2h | 64.75d | start no earlier than 2025-01-23 |  |  |  |  |
| 121 | 19.14 | Retrospective Meeting 14 |  | 2h | 2025-02-27 | 2025-02-27 |  | 2025-02-27 | 2025-02-27 | 2h | 39.75d | start no earlier than 2025-02-27 |  |  |  |  |
| 122 | 19.15 | Retrospective Meeting 15 |  | 2h | 2025-03-27 | 2025-03-27 |  | 2025-03-27 | 2025-03-27 | 2h | 19.75d | start no earlier than 2025-03-27 |  |  |  |  |
| 123 | 19.16 | Retrospective Meeting 16 |  | 2h | 2025-04-24 | 2025-04-24 |  | 2025-04-24 | 2025-04-24 | 2h | 0.75d | start no earlier than 2025-04-24 |  |  |  |  |
